# ПроектСИЭР v.0.2

How a schedule from MS Project changed from version to version. A marks actual dates.

## Version 1 (saved 2024-09-24, file ММОИВ.mpp)

| ID | WBS | Task | Duration | Start | Finish | Predecessors | Complete | Total float | Constraint |
| --- | --- | --- | --- | --- | --- | --- | --- | --- | --- |
| 1 | 1 | **ММОИВ** | 112.52d? | 2024-07-23 A | 2024-12-26 |  | 37% | 28.23d |  |
| 2 | 1.1 | **Вехи** | 112.52d | 2024-07-23 A | 2024-12-26 |  |  | 28.23d |  |
| 3 |  | Старт | 0d | 2024-07-23 A | 2024-07-23 A |  | 100% |  | start no earlier than 2024-07-23 |
| 4 |  | 0.5 - Прототип для согласования с ПО | 0d | 2024-08-28 A | 2024-08-28 A | 13 | 100% |  |  |
| 5 |  | 0.6 Прототип с отработкой замечаний ПО и показ ФЗ | 0d | 2024-09-27 | 2024-09-27 | 20 |  | 88.18d |  |
| 6 |  | 0.9 ФГ ММОИВ | 0d | 2024-10-14 | 2024-10-14 | 23 |  | 61.75d |  |
| 7 |  | 0.9 ФГ ММОИВ | 0d | 2024-10-14 | 2024-10-14 | 6 |  | 61.75d |  |
| 8 |  | 0.9.1 Совместное тестирование всех ЭФ и БП | 0d | 2024-11-04 | 2024-11-04 | 33 |  | 46.75d |  |
| 9 |  | 0.9.2 ОЭ ММОИВ | 0d | 2024-12-09 | 2024-12-09 | 41 |  | 21.75d |  |
| 10 |  | 0.9.2 ОЭ ММОИВ | 0d | 2024-12-09 | 2024-12-09 | 9 |  | 21.75d |  |
| 11 |  | 1.0 ОПЭ ММОИВ | 0d | 2024-12-26 | 2024-12-26 | 30 |  | 9d |  |
| 12 |  | 1.0 ОПЭ ММОИВ | 0d | 2024-12-26 | 2024-12-26 | 11 |  | 9d |  |
| 13 | 1.2 | **0.5 - Прототип для согласования с ПО** | 26.67d? | 2024-07-23 A | 2024-08-28 A |  | 100% |  |  |
| 14 |  | Анализ ФТ | 3d? | 2024-07-23 A | 2024-07-26 A | 3 | 100% |  |  |
| 15 |  | Фиксация финальной версии US | 2d? | 2024-07-26 A | 2024-07-30 A | 14 | 100% |  |  |
| 16 |  | Разработка БП | 5d? | 2024-07-30 A | 2024-08-06 A | 15 | 100% |  |  |
| 17 |  | Согласование и бейзлайн БП | 16.67d? | 2024-08-06 A | 2024-08-28 A | 16 | 100% |  |  |
| 18 |  | Разработка Концепции реализации | 4.29d? | 2024-08-06 A | 2024-08-12 A | 16 | 100% |  |  |
| 19 |  | Создание Прототипа | 7.14d? | 2024-08-12 A | 2024-08-21 A | 18 | 100% |  |  |
| 20 | 1.3 | **0.6 Прототип с отработкой замечаний ПО и показ ФЗ** | 26.67d? | 2024-08-21 A | 2024-09-27 A |  | 100% |  |  |
| 21 |  | Согласование и бейзлайн концепции реализации | 16.67d? | 2024-08-21 A | 2024-09-13 A | 19 | 100% |  |  |
| 22 |  | Согласование и финализация прототипа | 10d? | 2024-09-13 A | 2024-09-27 A | 21 | 100% |  |  |
| 23 | 1.4 | **0.9 ФГ Основные ЭФ и Шаблоны ПФ** | 38.33d? | 2024-08-21 A | 2024-10-14 |  | 43% | 80.98d |  |
| 24 |  | Настройка каркаса | 21.43d? | 2024-08-21 A | 2024-09-19 A | 21SS | 100% |  |  |
| 25 |  | Демо Каркаса | 0d | 2024-09-25 | 2024-09-25 | 24 |  | 75.52d | start no earlier than 2024-09-25 |
| 26 |  | Реализация ОСНОВНЫХ ЭФ | 16.67d? | 2024-08-21 A | 2024-09-13 | 21SS | 50% | 28.23d |  |
| 27 |  | Разработка Шаблонов ПФ | 16.67d? | 2024-09-13 | 2024-10-07 | 26 |  | 9d |  |
| 28 |  | Демо и финализация каркаса | 5d? | 2024-10-07 | 2024-10-14 | 24, 27 |  | 9d |  |
| 29 |  | РВИ и ЛМД | 10d? | 2024-09-24 | 2024-10-07 |  |  | 45.52d |  |
| 30 | 1.5 | **0.9.1 Подготовка релизной версии для ОПЭ** | 52.75d? | 2024-10-14 | 2024-12-26 |  |  | 28.23d |  |
| 31 |  | старт | 0d | 2024-10-14 | 2024-10-14 | 28 |  | 9d |  |
| 32 |  | Реализация всех ЭФ паралельно | 5d? | 2024-10-14 | 2024-10-21 | 31 |  | 56.75d |  |
| 33 |  | Реализация обработчиков | 15d? | 2024-10-14 | 2024-11-04 | 31 |  | 46.75d |  |
| 34 |  | Реализация ПФ паралельно | 35d? | 2024-10-14 | 2024-12-02 | 31 |  | 9d |  |
| 35 | 1.5.5 | **Разработка 3 итерация ФИНАЛИЗАЦИЯ** | 21d? | 2024-10-14 | 2024-11-12 | 31 |  | 59.98d |  |
| 36 |  | Совместные тестирования и уточнения ПЗ по бэку | 4d? | 2024-10-14 | 2024-10-18 | 29 |  | 40.75d |  |
| 37 |  | Реализация бэк методов | 5d? | 2024-10-18 | 2024-10-25 | 36 |  | 52.75d |  |
| 38 |  | Тесты и финальные уточнения ПЗ по фронту | 10d? | 2024-10-18 | 2024-11-01 | 36 |  | 40.75d |  |
| 39 |  | Финализация фронта | 7d? | 2024-11-01 | 2024-11-12 | 38 |  | 40.75d |  |
| 40 |  | Релизные тесты | 3d? | 2024-12-02 | 2024-12-05 | 34 |  | 9d |  |
| 41 |  | Регресс тесты | 2d? | 2024-12-05 | 2024-12-09 | 40 |  | 9d |  |
| 42 | 1.5.8 | **Разработка СОПРОВОЖДЕНИЕ** | 5d? | 2024-12-05 | 2024-12-12 | 40 |  | 37.98d |  |
| 43 |  | Тесты и Уточнения ПЗ по бэку | 5d? | 2024-12-05 | 2024-12-12 |  |  | 18.75d |  |
| 44 |  | Стабилизация бэк методов | 2.5d? | 2024-12-05 | 2024-12-10 |  |  | 21.25d |  |
| 45 |  | Тесты и Уточнения ПЗ по фронту | 5d? | 2024-12-05 | 2024-12-12 |  |  | 18.75d |  |
| 46 |  | Стабилизация фронта | 5d? | 2024-12-05 | 2024-12-12 |  |  | 18.75d |  |
| 47 |  | Стабилизация | 3.75d? | 2024-12-09 | 2024-12-13 | 41 |  | 9d |  |
| 48 |  | Релизные тесты | 2d? | 2024-12-13 | 2024-12-17 | 47 |  | 9d |  |
| 49 |  | Регресс тесты | 2d? | 2024-12-13 | 2024-12-17 | 48SS |  | 9d |  |
| 50 |  | Развертывание | 4d? | 2024-12-17 | 2024-12-23 | 49 |  | 9d |  |
| 51 |  | Релизные тесты | 3d? | 2024-12-23 | 2024-12-26 | 50 |  | 9d |  |
| 52 |  | Регресс тесты | 2d? | 2024-12-23 | 2024-12-25 | 51SS |  | 10d |  |
| 53 |  | Выпуск | 0d | 2024-12-25 | 2024-12-25 | 52 |  | 10d |  |

## Version 2 (saved 2024-09-24, file МНГ.mpp)

Last finish 2024-12-26 → 2025-02-04 (+40d). Complete tasks 11 → 15.

Added:

| ID | Task | Duration | Start | Finish | Predecessors | Resources |
| --- | --- | --- | --- | --- | --- | --- |
| 29 | **Разработка 1 итерация каркасная** | 17d? | 2024-08-23 A | 2024-09-17 A |  |  |
| 30 | Разработка ПЗ по бэку | 4d? | 2024-08-23 A | 2024-08-29 A | 18 | Нарубина |
| 31 | Реализация бэк методов | 5d? | 2024-08-29 A | 2024-09-05 A | 30 | Павленко |
| 32 | Разработка ПЗ по фронту | 6d? | 2024-08-29 A | 2024-09-06 A | 30 | Нарубина |
| 33 | Разрабокта фронта | 7d? | 2024-09-06 A | 2024-09-17 A | 32 | Фронт-разработчик1 |
| 36 | **Разработка 2 итерация Счастливый путь** | 25d? | 2024-10-23 | 2024-11-27 | 34 |  |
| 37 | Финальные уточнения ПЗ по бэку | 5d? | 2024-10-23 | 2024-10-30 |  | Нарубина |
| 38 | Реализация бэк методов | 7.5d? | 2024-10-30 | 2024-11-08 | 37 | Павленко |
| 39 | Финальные уточнения ПЗ по фронту | 10d? | 2024-10-30 | 2024-11-13 | 37 | Нарубина |
| 40 | Разрабокта фронта | 10d? | 2024-11-13 | 2024-11-27 | 39 | Фронт-разработчик1 |

Changed:

| ID | Task | Start | Finish | Duration | Complete | Total float | Predecessors | Other |
| --- | --- | --- | --- | --- | --- | --- | --- | --- |
| 1 | **Типовой шаблон СИЭР (средний модуль)** | 2024-07-23 A → 2024-08-05 A (+13d) | 2024-12-26 → 2025-02-04 (+40d) | 112.52d? → 131.75d? |  | 28.23d → 0d |  | was named ММОИВ |
| 2 | **Вехи** | 2024-07-23 A → 2024-08-05 A (+13d) | 2024-12-26 → 2025-02-04 (+40d) | 112.52d → 131.75d |  | 28.23d → 0d |  |  |
| 3 | Старт | 2024-07-23 A → 2024-08-05 A (+13d) | 2024-07-23 A → 2024-08-05 A (+13d) |  |  |  |  | constraint start no earlier than 2024-07-23 → start no earlier than 2024-08-05 |
| 4 | 0.5 - Прототип для согласования с ПО | 2024-08-28 A → 2024-09-10 A (+13d) | 2024-08-28 A → 2024-09-10 A (+13d) |  |  |  |  |  |
| 5 | 0.6 Прототип с отработкой замечаний ПО и показ ФЗ | 2024-09-27 → 2024-10-10 (+13d) | 2024-09-27 → 2024-10-10 (+13d) |  |  | 88.18d → 83.65d |  |  |
| 6 | 0.9 ФГ МНГ | 2024-10-14 → 2024-11-21 (+38d) | 2024-10-14 → 2024-11-21 (+38d) |  |  | 61.75d → 33.52d |  | was named 0.9 ФГ ММОИВ |
| 7 | 0.9 ФГ МНГ | 2024-10-14 → 2024-11-21 (+38d) | 2024-10-14 → 2024-11-21 (+38d) |  |  | 61.75d → 52.75d |  | was named 0.9 ФГ ММОИВ |
| 8 | 0.9.1 Совместное тестирование всех ЭФ и БП | 2024-11-04 → 2024-12-12 (+38d) | 2024-11-04 → 2024-12-12 (+38d) |  |  | 46.75d → 37.75d |  |  |
| 9 | 0.9.2 ОЭ МНГ | 2024-12-09 → 2025-01-16 (+38d) | 2024-12-09 → 2025-01-16 (+38d) |  |  | 21.75d → 12.75d |  | was named 0.9.2 ОЭ ММОИВ |
| 10 | 0.9.2 ОЭ МНГ | 2024-12-09 → 2025-01-16 (+38d) | 2024-12-09 → 2025-01-16 (+38d) |  |  | 21.75d → 12.75d |  | was named 0.9.2 ОЭ ММОИВ |
| 11 | 1.0 ОПЭ МНГ | 2024-12-26 → 2025-02-04 (+40d) | 2024-12-26 → 2025-02-04 (+40d) |  |  | 9d → 0d |  | was named 1.0 ОПЭ ММОИВ |
| 12 | 1.0 ОПЭ МНГ | 2024-12-26 → 2025-02-04 (+40d) | 2024-12-26 → 2025-02-04 (+40d) |  |  | 9d → 0d |  | was named 1.0 ОПЭ ММОИВ |
| 13 | **0.5 - Прототип для согласования с ПО** | 2024-07-23 A → 2024-08-05 A (+13d) | 2024-08-28 A → 2024-09-10 A (+13d) |  |  |  |  |  |
| 14 | Анализ ФТ | 2024-07-23 A → 2024-08-05 A (+13d) | 2024-07-26 A → 2024-08-08 A (+13d) |  |  |  |  | resources Миронова → Нарубина |
| 15 | Фиксация финальной версии US | 2024-07-26 A → 2024-08-08 A (+13d) | 2024-07-30 A → 2024-08-12 A (+13d) |  |  |  |  | resources Миронова → Нарубина |
| 16 | Разработка БП | 2024-07-30 A → 2024-08-12 A (+13d) | 2024-08-06 A → 2024-08-19 A (+13d) |  |  |  |  | resources Миронова → Нарубина |
| 17 | Согласование и бейзлайн БП | 2024-08-06 A → 2024-08-19 A (+13d) | 2024-08-28 A → 2024-09-10 A (+13d) |  |  |  |  | resources Миронова [30%] → Нарубина [30%] |
| 18 | Разработка Концепции реализации | 2024-08-06 A → 2024-08-19 A (+13d) | 2024-08-12 A → 2024-08-23 A (+11d) |  |  |  |  | resources Миронова [70%] → Нарубина [70%] |
| 19 | Создание Прототипа | 2024-08-12 A → 2024-08-23 A (+11d) | 2024-08-21 A → 2024-09-03 A (+13d) |  |  |  |  | resources Миронова [70%] → Нарубина [70%] |
| 20 | **0.6 Прототип с отработкой замечаний ПО и показ ФЗ** | 2024-08-21 A → 2024-09-03 A (+13d) | 2024-09-27 A → 2024-10-10 A (+13d) |  |  |  |  |  |
| 21 | Согласование и бейзлайн концепции реализации | 2024-08-21 A → 2024-09-03 A (+13d) | 2024-09-13 A → 2024-09-26 A (+13d) |  |  |  |  | resources Миронова [30%] → Нарубина [30%] |
| 22 | Согласование и финализация прототипа | 2024-09-13 A → 2024-09-26 A (+13d) | 2024-09-27 A → 2024-10-10 A (+13d) |  |  |  |  | resources Миронова [30%] → Нарубина [30%] |
| 23 | **0.9 ФГ Основные ЭФ и Шаблоны ПФ** | 2024-08-21 A → 2024-08-23 A (+2d) | 2024-10-14 → 2024-11-21 (+38d) | 38.33d? → 64.71d? | 43% → 55% | 80.98d → 52.75d |  |  |
| 24 | Настройка каркаса | 2024-08-21 A → 2024-09-03 A (+13d) | 2024-09-19 A → 2024-09-27 A (+8d) | 21.43d? → 17.86d? |  |  | 21SS → 21SS, 22 | resources Миронова [70%] → Нарубина [70%] |
| 25 | Показ каркаса | 2024-09-25 → 2024-09-27 (+2d) | 2024-09-25 → 2024-09-27 (+2d) |  |  | 75.52d → 73.23d |  | was named Демо Каркаса; constraint start no earlier than 2024-09-25 → start no earlier than 2024-09-26 |
| 26 | Реализация ОСНОВНЫХ ЭФ | 2024-08-21 A → 2024-09-03 A (+13d) | 2024-09-13 → 2024-10-09 (+26d) |  |  | 28.23d → 0d |  | resources Методолог2 [30%] → Нарубина [30%] |
| 27 | Разработка Шаблонов ПФ | 2024-09-13 → 2024-10-23 (+40d) | 2024-10-07 → 2024-11-14 (+38d) |  |  | 9d → 0d |  | resources Методолог2 [30%] → Нарубина [30%] |
| 28 | Демо и финализация каркаса | 2024-10-07 → 2024-11-15 (+39d) | 2024-10-14 → 2024-11-21 (+38d) |  |  | 9d → 0d |  | resources Миронова → Нарубина |
| 34 | РВИ и ЛМД | 2024-09-24 → 2024-10-09 (+15d) | 2024-10-07 → 2024-10-23 (+16d) |  |  | 45.52d → 49.42d | none → 32, 26 | resources Невмывака → Нарубина [40%] |
| 35 | **0.9.1 Подготовка релизной версии для ОПЭ** | 2024-10-14 → 2024-10-23 (+9d) | 2024-12-26 → 2025-02-04 (+40d) | 52.75d? → 74.42d? |  | 28.23d → 0d |  |  |
| 41 | старт | 2024-10-14 → 2024-11-21 (+38d) | 2024-10-14 → 2024-11-21 (+38d) |  |  | 9d → 0d |  |  |
| 42 | Реализация всех ЭФ паралельно | 2024-10-14 → 2024-11-22 (+39d) | 2024-10-21 → 2024-11-28 (+38d) |  |  | 56.75d → 47.75d |  | resources Миронова [60%] → Нарубина [60%] |
| 43 | Реализация обработчиков | 2024-10-14 → 2024-11-22 (+39d) | 2024-11-04 → 2024-12-12 (+38d) |  |  | 46.75d → 37.75d |  | resources Миронова [20%] → Нарубина [20%] |
| 44 | Реализация ПФ паралельно | 2024-10-14 → 2024-11-22 (+39d) | 2024-12-02 → 2025-01-09 (+38d) |  |  | 9d → 0d |  | resources Миронова [20%] → Нарубина [20%] |
| 45 | **Разработка 3 итерация ФИНАЛИЗАЦИЯ** | 2024-10-14 → 2024-11-22 (+39d) | 2024-11-12 → 2024-12-23 (+41d) |  |  | 59.98d → 31.75d |  |  |
| 46 | Совместные тестирования и уточнения ПЗ по бэку | 2024-10-14 → 2024-11-22 (+39d) | 2024-10-18 → 2024-11-28 (+41d) |  |  | 40.75d → 31.75d |  | resources Невмывака → Нарубина |
| 47 | Реализация бэк методов | 2024-10-18 → 2024-11-28 (+41d) | 2024-10-25 → 2024-12-05 (+41d) |  |  | 52.75d → 43.75d |  | resources Аленин → Павленко |
| 48 | Тесты и финальные уточнения ПЗ по фронту | 2024-10-18 → 2024-11-28 (+41d) | 2024-11-01 → 2024-12-12 (+41d) |  |  | 40.75d → 31.75d |  | resources Невмывака → Нарубина |
| 49 | Финализация фронта | 2024-11-01 → 2024-12-12 (+41d) | 2024-11-12 → 2024-12-23 (+41d) |  |  | 40.75d → 31.75d |  |  |
| 50 | Релизные тесты | 2024-12-02 → 2025-01-10 (+39d) | 2024-12-05 → 2025-01-14 (+40d) |  |  | 9d → 0d |  | resources Миронова; Методолог2 → Нарубина; Методолог2 |
| 51 | Регресс тесты | 2024-12-05 → 2025-01-15 (+41d) | 2024-12-09 → 2025-01-16 (+38d) |  |  | 9d → 0d |  | resources Миронова; Методолог2 → Нарубина; Методолог2 |
| 52 | **Разработка СОПРОВОЖДЕНИЕ** | 2024-12-05 → 2025-01-15 (+41d) | 2024-12-12 → 2025-01-21 (+40d) |  |  | 37.98d → 9.75d |  |  |
| 53 | Тесты и Уточнения ПЗ по бэку | 2024-12-05 → 2025-01-15 (+41d) | 2024-12-12 → 2025-01-21 (+40d) |  |  | 18.75d → 9.75d |  | resources Невмывака [50%] → Нарубина [50%] |
| 54 | Стабилизация бэк методов | 2024-12-05 → 2025-01-15 (+41d) | 2024-12-10 → 2025-01-17 (+38d) |  |  | 21.25d → 12.25d |  | resources Аленин → Павленко |
| 55 | Тесты и Уточнения ПЗ по фронту | 2024-12-05 → 2025-01-15 (+41d) | 2024-12-12 → 2025-01-21 (+40d) |  |  | 18.75d → 9.75d |  | resources Невмывака [50%] → Нарубина [50%] |
| 56 | Стабилизация фронта | 2024-12-05 → 2025-01-15 (+41d) | 2024-12-12 → 2025-01-21 (+40d) |  |  | 18.75d → 9.75d |  |  |
| 57 | Стабилизация | 2024-12-09 → 2025-01-17 (+39d) | 2024-12-13 → 2025-01-22 (+40d) |  |  | 9d → 0d |  | resources Миронова; Методолог2 → Нарубина; Методолог2 |
| 58 | Релизные тесты | 2024-12-13 → 2025-01-22 (+40d) | 2024-12-17 → 2025-01-24 (+38d) |  |  | 9d → 0d |  |  |
| 59 | Регресс тесты | 2024-12-13 → 2025-01-22 (+40d) | 2024-12-17 → 2025-01-24 (+38d) |  |  | 9d → 0d |  | resources Миронова → Нарубина |
| 60 | Развертывание | 2024-12-17 → 2025-01-24 (+38d) | 2024-12-23 → 2025-01-30 (+38d) |  |  | 9d → 0d |  | resources Миронова; Методолог2 → Нарубина; Методолог2 |
| 61 | Релизные тесты | 2024-12-23 → 2025-01-30 (+38d) | 2024-12-26 → 2025-02-04 (+40d) |  |  | 9d → 0d |  |  |
| 62 | Регресс тесты | 2024-12-23 → 2025-01-30 (+38d) | 2024-12-25 → 2025-02-03 (+40d) |  |  | 10d → 1d |  | resources Миронова → Нарубина |
| 63 | Выпуск | 2024-12-25 → 2025-02-03 (+40d) | 2024-12-25 → 2025-02-03 (+40d) |  |  | 10d → 1d |  |  |

## Version 3 (saved 2024-09-25, file МУНР.mpp)

Last finish 2025-02-04 → 2024-12-12 (-54d). Complete tasks 15 → 0.

Removed: 7 0.9 ФГ МНГ; 10 0.9.2 ОЭ МНГ; 12 1.0 ОПЭ МНГ; 25 Показ каркаса

Changed:

| ID | Task | Start | Finish | Duration | Complete | Total float | Predecessors | Other |
| --- | --- | --- | --- | --- | --- | --- | --- | --- |
| 1 | **Типовой шаблон СИЭР (средний модуль)** | 2024-08-05 A → 2024-09-02 (+28d) | 2025-02-04 → 2024-12-12 (-54d) | 131.75d? → 73.71d? | 37% → 0% |  |  |  |
| 2 | **Вехи** | 2024-08-05 A → 2024-09-02 (+28d) | 2025-02-04 → 2024-12-12 (-54d) | 131.75d → 73.71d |  |  |  |  |
| 3 | Старт | 2024-08-05 A → 2024-09-02 (+28d) | 2024-08-05 A → 2024-09-02 (+28d) |  | 100% → 0% | none → 0d |  | constraint start no earlier than 2024-08-05 → start no earlier than 2024-09-02 |
| 4 | 0.5 - Прототип для согласования с ПО | 2024-09-10 A → 2024-10-08 (+28d) | 2024-09-10 A → 2024-10-08 (+28d) |  | 100% → 0% | none → 100.61d |  |  |
| 5 | 0.6 Прототип с отработкой замечаний ПО и показ ФЗ | 2024-10-10 → 2024-11-07 (+28d) | 2024-10-10 → 2024-11-07 (+28d) |  |  | 83.65d → 79.18d |  |  |
| 6 | 0.9 ФГ |  |  |  |  | 33.52d → 46d |  | was named 0.9 ФГ МНГ |
| 7 | 0.9.1 Совместное тестирование всех ЭФ и БП | 2024-12-12 → 2024-12-02 (-10d) | 2024-12-12 → 2024-12-02 (-10d) |  |  | 37.75d → 7.75d |  |  |
| 8 | 0.9.2 ОЭ | 2025-01-16 → 2024-12-04 (-43d) | 2025-01-16 → 2024-12-04 (-43d) |  |  | 12.75d → 6.5d |  | was named 0.9.2 ОЭ МНГ |
| 9 | 1.0 ОПЭ | 2025-02-04 → 2024-12-12 (-54d) | 2025-02-04 → 2024-12-12 (-54d) |  |  |  |  | was named 1.0 ОПЭ МНГ |
| 10 | **0.5 - Прототип для согласования с ПО** | 2024-08-05 A → 2024-09-02 (+28d) | 2024-09-10 A → 2024-10-08 (+28d) |  | 100% → 0% | none → 0d |  |  |
| 11 | Анализ ФТ | 2024-08-05 A → 2024-09-02 (+28d) | 2024-08-08 A → 2024-09-05 (+28d) |  | 100% → 0% | none → 0d |  | resources Нарубина → Методолог1 |
| 12 | Фиксация финальной версии US | 2024-08-08 A → 2024-09-05 (+28d) | 2024-08-12 A → 2024-09-09 (+28d) |  | 100% → 0% | none → 0d |  | resources Нарубина → Методолог1 |
| 13 | Разработка БП | 2024-08-12 A → 2024-09-09 (+28d) | 2024-08-19 A → 2024-09-16 (+28d) |  | 100% → 0% | none → 0d |  | resources Нарубина → Методолог1 |
| 14 | Согласование и бейзлайн БП | 2024-08-19 A → 2024-09-16 (+28d) | 2024-09-10 A → 2024-10-08 (+28d) |  | 100% → 0% | none → 100.61d |  | resources Нарубина [30%] → Методолог1 [30%] |
| 15 | Разработка Концепции реализации | 2024-08-19 A → 2024-09-16 (+28d) | 2024-08-23 A → 2024-09-20 (+28d) |  | 100% → 0% | none → 0d |  | resources Нарубина [70%] → Методолог1 [70%] |
| 16 | Создание Прототипа | 2024-08-23 A → 2024-09-20 (+28d) | 2024-09-03 A → 2024-10-01 (+28d) |  | 100% → 0% | none → 0d |  | resources Нарубина [70%] → Методолог1 [70%] |
| 17 | **0.6 Прототип с отработкой замечаний ПО и показ ФЗ** | 2024-09-03 A → 2024-10-01 (+28d) | 2024-10-10 A → 2024-11-07 (+28d) |  | 100% → 0% | none → 0d |  |  |
| 18 | Согласование и бейзлайн концепции реализации | 2024-09-03 A → 2024-10-01 (+28d) | 2024-09-26 A → 2024-10-24 (+28d) |  | 100% → 0% | none → 0d |  | resources Нарубина [30%] → Методолог1 [30%] |
| 19 | Согласование и финализация прототипа | 2024-09-26 A → 2024-10-24 (+28d) | 2024-10-10 A → 2024-11-07 (+28d) |  | 100% → 0% | none → 0d |  | resources Нарубина [30%] → Методолог1 [30%] |
| 20 | **0.9 ФГ Основные ЭФ и Шаблоны ПФ** | 2024-08-23 A → 2024-09-20 (+28d) |  | 64.71d? → 44.17d? | 55% → 0% | 52.75d → 14.17d |  |  |
| 21 | Настройка каркаса | 2024-09-03 A → 2024-11-07 (+65d) | 2024-09-27 A → 2024-11-14 (+48d) | 17.86d? → 5.36d? | 100% → 0% | none → 0d |  | resources Нарубина [70%] → Методолог1 [70%] |
| 22 | Реализация ОСНОВНЫХ ЭФ | 2024-09-03 A → 2024-10-01 (+28d) | 2024-10-09 → 2024-10-17 (+8d) | 16.67d? → 12.5d? | 50% → 0% | 0d → 23.1d |  | resources Нарубина [30%] → Методолог2 [30%] |
| 23 | Разработка Шаблонов ПФ | 2024-10-23 → 2024-10-17 (-6d) | 2024-11-14 → 2024-11-05 (-9d) | 16.67d? → 12.5d? |  | 0d → 23.1d |  | resources Нарубина [30%] → Методолог2 [30%] |
| 24 | Демо и финализация каркаса | 2024-11-15 → 2024-11-14 (-1d) |  |  |  |  |  | resources Нарубина → Методолог1 |
| 25 | **Разработка 1 итерация каркасная** | 2024-08-23 A → 2024-09-20 (+28d) | 2024-09-17 A → 2024-10-07 (+20d) | 17d? → 11d? | 100% → 0% | none → 23.42d |  |  |
| 26 | Разработка ПЗ по бэку | 2024-08-23 A → 2024-09-20 (+28d) | 2024-08-29 A → 2024-09-26 (+28d) |  | 100% → 0% | none → 67.99d |  | resources Нарубина → Аналитик1 |
| 27 | Реализация бэк методов | 2024-08-29 A → 2024-09-26 (+28d) | 2024-09-05 A → 2024-09-27 (+22d) | 5d? → 1d? | 100% → 0% | none → 107.99d |  | resources Павленко → Разработчик1 |
| 28 | Разработка ПЗ по фронту | 2024-08-29 A → 2024-09-26 (+28d) | 2024-09-06 A → 2024-10-04 (+28d) |  | 100% → 0% | none → 67.99d |  | resources Нарубина → Аналитик1 |
| 29 | Разрабокта фронта | 2024-09-06 A → 2024-10-04 (+28d) | 2024-09-17 A → 2024-10-07 (+20d) | 7d? → 1d? | 100% → 0% | none → 101.99d |  |  |
| 30 | РВИ и ЛМД | 2024-10-09 → 2024-10-04 (-5d) | 2024-10-23 → 2024-10-18 (-5d) |  |  | 49.42d → 67.99d | 28, 22 → 28 | resources Нарубина [40%] → Аналитик1 |
| 31 | **0.9.1 Подготовка релизной версии для ОПЭ** | 2024-10-23 → 2024-10-18 (-5d) | 2025-02-04 → 2024-12-12 (-54d) | 74.42d? → 39.42d? |  |  |  |  |
| 32 | **Разработка 2 итерация Счастливый путь** | 2024-10-23 → 2024-10-18 (-5d) | 2024-11-27 → 2024-11-11 (-16d) | 25d? → 16d? |  | 49.42d → 23.42d |  |  |
| 33 | Финальные уточнения ПЗ по бэку | 2024-10-23 → 2024-10-18 (-5d) | 2024-10-30 → 2024-10-25 (-5d) |  |  | 49.42d → 67.99d |  | resources Нарубина → Аналитик1 |
| 34 | Реализация бэк методов | 2024-10-30 → 2024-10-25 (-5d) | 2024-11-08 → 2024-10-28 (-11d) | 7.5d? → 1d? |  | 61.92d → 86.99d |  | resources Павленко → Разработчик1 |
| 35 | Финальные уточнения ПЗ по фронту | 2024-10-30 → 2024-10-25 (-5d) | 2024-11-13 → 2024-11-08 (-5d) |  |  | 49.42d → 67.99d |  | resources Нарубина → Аналитик1 |
| 36 | Разрабокта фронта | 2024-11-13 → 2024-11-08 (-5d) | 2024-11-27 → 2024-11-11 (-16d) | 10d? → 1d? |  | 49.42d → 76.99d |  |  |
| 38 | Реализация всех ЭФ паралельно | 2024-11-22 → 2024-11-21 (-1d) | 2024-11-28 → 2024-11-25 (-3d) | 5d? → 2.08d? |  | 47.75d → 13.17d |  | resources Нарубина [60%] → Методолог1 [60%] |
| 39 | Реализация обработчиков | 2024-11-22 → 2024-11-21 (-1d) | 2024-12-12 → 2024-12-02 (-10d) | 15d? → 7.5d? |  | 37.75d → 7.75d |  | resources Нарубина [20%] → Методолог1 [20%] |
| 40 | Реализация ПФ паралельно | 2024-11-22 → 2024-11-21 (-1d) | 2025-01-09 → 2024-11-29 (-41d) | 35d? → 6.25d? |  |  |  | resources Нарубина [20%] → Методолог1 [20%] |
| 41 | **Разработка 3 итерация ИНТЕГРАЦИИ и Полный путь** | 2024-11-22 → 2024-11-21 (-1d) | 2024-12-23 → 2024-11-28 (-25d) | 21d? → 5.12d? |  | 31.75d → 10.12d |  | was named Разработка 3 итерация ФИНАЛИЗАЦИЯ |
| 42 | Совместные тестирования и уточнения ПЗ по бэку | 2024-11-22 → 2024-11-21 (-1d) | 2024-11-28 → 2024-11-25 (-3d) | 4d? → 2d? |  | 31.75d → 10.12d |  | resources Нарубина → Аналитик1 |
| 43 | Реализация бэк методов | 2024-11-28 → 2024-11-25 (-3d) | 2024-12-05 → 2024-11-26 (-9d) | 5d? → 1.25d? |  | 43.75d → 12d |  | resources Павленко → Разработчик1 |
| 44 | Тесты и финальные уточнения ПЗ по фронту | 2024-11-28 → 2024-11-25 (-3d) | 2024-12-12 → 2024-11-26 (-16d) | 10d? → 1.25d? |  | 31.75d → 10.12d |  | resources Нарубина → Аналитик1 |
| 45 | Финализация фронта | 2024-12-12 → 2024-11-26 (-16d) | 2024-12-23 → 2024-11-28 (-25d) | 7d? → 1.88d? |  | 31.75d → 10.12d |  |  |
| 46 | Релизные тесты | 2025-01-10 → 2024-11-29 (-42d) | 2025-01-14 → 2024-12-03 (-42d) | 3d? → 1.5d? |  |  |  | resources Нарубина; Методолог2 → Методолог1; Методолог2 |
| 47 | Регресс тесты | 2025-01-15 → 2024-12-03 (-43d) | 2025-01-16 → 2024-12-04 (-43d) | 2d? → 1d? |  |  |  | resources Нарубина; Методолог2 → Методолог1; Методолог2 |
| 48 | **Разработка ФИНАЛИЗАЦИЯ и СОПРОВОЖДЕНИЕ** | 2025-01-15 → 2024-12-03 (-43d) | 2025-01-21 → 2024-12-04 (-48d) | 5d? → 1.25d? |  | 9.75d → 6.25d |  | was named Разработка СОПРОВОЖДЕНИЕ |
| 49 | Тесты и Уточнения ПЗ по бэку | 2025-01-15 → 2024-12-03 (-43d) | 2025-01-21 → 2024-12-04 (-48d) | 5d? → 1.25d? |  | 9.75d → 6.25d |  | resources Нарубина [50%] → Аналитик1 [50%] |
| 50 | Стабилизация бэк методов | 2025-01-15 → 2024-12-03 (-43d) | 2025-01-17 → 2024-12-03 (-45d) | 2.5d? → 0.38d? |  | 12.25d → 7.12d |  | resources Павленко → Разработчик1 |
| 51 | Тесты и Уточнения ПЗ по фронту | 2025-01-15 → 2024-12-03 (-43d) | 2025-01-21 → 2024-12-03 (-49d) | 5d? → 0.75d? |  | 9.75d → 6.75d |  | resources Нарубина [50%] → Аналитик1 [50%] |
| 52 | Стабилизация фронта | 2025-01-15 → 2024-12-03 (-43d) | 2025-01-21 → 2024-12-03 (-49d) | 5d? → 0.38d? |  | 9.75d → 7.12d |  |  |
| 53 | Стабилизация | 2025-01-17 → 2024-12-04 (-44d) | 2025-01-22 → 2024-12-06 (-47d) | 3.75d? → 2.5d? |  |  |  | resources Нарубина; Методолог2 → Методолог1; Методолог2 |
| 54 | Релизные тесты | 2025-01-22 → 2024-12-06 (-47d) | 2025-01-24 → 2024-12-10 (-45d) |  |  |  |  |  |
| 55 | Регресс тесты | 2025-01-22 → 2024-12-06 (-47d) | 2025-01-24 → 2024-12-09 (-46d) | 2d? → 1d? |  |  |  | resources Нарубина → Методолог1 |
| 56 | Развертывание | 2025-01-24 → 2024-12-09 (-46d) | 2025-01-30 → 2024-12-11 (-50d) | 4d? → 2d |  |  |  | resources Нарубина; Методолог2 → Методолог1; Методолог2 |
| 57 | Релизные тесты | 2025-01-30 → 2024-12-11 (-50d) | 2025-02-04 → 2024-12-12 (-54d) | 3d? → 1d? |  |  |  |  |
| 58 | Регресс тесты | 2025-01-30 → 2024-12-11 (-50d) | 2025-02-03 → 2024-12-12 (-53d) | 2d? → 0.5d? |  | 1d → 0.5d |  | resources Нарубина → Методолог1 |
| 59 | Выпуск | 2025-02-03 → 2024-12-12 (-53d) | 2025-02-03 → 2024-12-12 (-53d) |  |  | 1d → 0.5d |  |  |
